Schedule from MS Project, 2021-09-06 to 2022-01-18, status date 2021-11-23, costs in ¥, A marks actual dates.

## Calendars

- 标准: Mon-Fri 08:00-12:00, 13:00-17:00; Sat-Sun off.

## Resources

| Resource | Group | Rate | Cost per use |
| --- | --- | --- | --- |
| 项目经理0 | 产品经理 | 200 | 1000 |
| 策划0 | 游戏策划 | 200 | 1000 |
| 策划1 | 游戏策划 | 200 | 1000 |
| 程序0 | 游戏程序 | 200 | 1000 |
| 程序1 | 游戏程序 | 200 | 1000 |
| 程序2 | 游戏程序 | 200 | 1000 |
| 美术0 | 游戏美术 | 200 | 1000 |
| 美术1 | 游戏美术 | 50 | 1000 |
| 测试0 | 测试人员 | 50 | 1000 |
| 测试1 | 测试人员 | 50 | 1000 |
| 测试2 | 测试人员 | 50 | 1000 |
| 项目预算 |  |  |  |
| 预算工时 |  |  |  |

## Schedule

| ID | WBS | Task | Type | Duration | Start | Finish | Predecessors | Complete | Baseline start | Baseline finish | Baseline duration | Resources | Work | Actual work | Cost | Baseline cost | Actual cost |
| --- | --- | --- | --- | --- | --- | --- | --- | --- | --- | --- | --- | --- | --- | --- | --- | --- | --- |
| 1 | 1 | **制定项目计划** |  | 10.75d | 2021-09-06 A | 2021-09-20 A |  | 100% | 2021-09-06 | 2021-09-20 | 10.75d |  | 86h | 86h | 33,200 | 33,200 | 33,200 |
| 2 | 1.1 | 初步调研 |  | 51h | 2021-09-06 A | 2021-09-14 A |  | 100% | 2021-09-06 | 2021-09-14 | 51h | 项目经理0 | 51h | 51h | 21,200 | 21,200 | 21,200 |
| 3 | 1.2 | 范围计划 |  | 21h | 2021-09-14 A | 2021-09-17 A | 2 | 100% | 2021-09-14 | 2021-09-17 | 21h | 项目经理0 | 21h | 21h | 6,200 | 6,200 | 6,200 |
| 4 | 1.3 | 进度计划 |  | 10h | 2021-09-17 A | 2021-09-20 A | 3 | 100% | 2021-09-17 | 2021-09-20 | 10h | 项目经理0 | 10h | 10h | 4,000 | 4,000 | 4,000 |
| 5 | 1.4 | 成本计划 |  | 4h | 2021-09-20 A | 2021-09-20 A | 4 | 100% | 2021-09-20 | 2021-09-20 | 4h | 项目经理0 | 4h | 4h | 1,800 | 1,800 | 1,800 |
| 6 | 2 | **系统分析** |  | 14.25d | 2021-09-21 A | 2021-10-11 A | 1 | 100% | 2021-09-21 | 2021-10-11 | 14.25d |  | 405h | 405h | 99,800 | 99,800 | 99,800 |
| 7 | 2.1 | 竞品分析 |  | 20h | 2021-09-21 A | 2021-09-23 A | 4, 2, 3, 5 | 100% | 2021-09-21 | 2021-09-23 | 20h | 策划1; 项目经理0; 策划0 | 33h | 33h | 9,600 | 9,600 | 9,600 |
| 8 | 2.2 | 游戏玩法需求分析 |  | 45h | 2021-09-23 A | 2021-10-01 A | 7 | 100% | 2021-09-23 | 2021-10-01 | 45h | 策划1; 策划0; 项目经理0 | 135h | 135h | 30,000 | 30,000 | 30,000 |
| 9 | 2.3 | 游戏系统需求分析 |  | 25h | 2021-10-01 A | 2021-10-06 A | 8 | 100% | 2021-10-01 | 2021-10-06 | 25h | 程序0; 策划0; 策划1; 程序1; 程序2 | 125h | 125h | 25,000 | 25,000 | 25,000 |
| 10 | 2.4 | 游戏网络功能需求分析 |  | 8h | 2021-10-06 A | 2021-10-07 A | 9, 8 | 100% | 2021-10-06 | 2021-10-07 | 8h | 程序0; 程序1; 程序2 | 24h | 24h | 7,800 | 7,800 | 7,800 |
| 11 | 2.5 | 分析报告终稿 |  | 8h | 2021-10-07 A | 2021-10-08 A | 10, 7, 8, 9 | 100% | 2021-10-07 | 2021-10-08 | 8h | 策划1; 项目经理0; 策划0 | 24h | 24h | 7,800 | 7,800 | 7,800 |
| 12 | 2.6 | 需求确认 |  | 8h | 2021-10-08 A | 2021-10-11 A | 11 | 100% | 2021-10-08 | 2021-10-11 | 8h | 美术1; 策划0; 策划1; 程序0; 程序1; 程序2; 项目经理0; 美术0 | 64h | 64h | 19,600 | 19,600 | 19,600 |
| 13 | 3 | **系统设计** |  | 24.75d | 2021-10-11 A | 2021-11-12 A | 6 | 100% | 2021-10-11 | 2021-11-11 | 23d |  | 588.4h | 588.4h | 155,080 | 154,280 | 155,080 |
| 14 | 3.1 | 系统架构设计 |  | 16h | 2021-10-11 A | 2021-10-13 A | 12 | 100% | 2021-10-11 | 2021-10-13 | 16h | 策划0; 策划1; 程序0; 程序1; 程序2 | 80h | 80h | 20,000 | 20,000 | 20,000 |
| 15 | 3.2 | 网络结构设计 |  | 8h | 2021-10-13 A | 2021-10-14 A | 14 | 100% | 2021-10-13 | 2021-10-14 | 8h | 程序0 | 8h | 8h | 20,000 | 20,000 | 20,000 |
| 16 | 3.3 | 系统总体设计 |  | 26h | 2021-10-14 A | 2021-10-19 A | 14, 15 | 100% | 2021-10-14 | 2021-10-19 | 26h | 程序1; 程序2 | 52h | 52h | 12,400 | 12,400 | 12,400 |
| 17 | 3.4 | **子系统详细设计** |  | 13.5d | 2021-10-19 A | 2021-11-07 A | 15, 16 | 100% | 2021-10-19 | 2021-11-08 | 13.75d |  | 320.4h | 320.4h | 74,880 | 85,280 | 74,880 |
| 18 | 3.4.1 | **对局系统详细设计** |  | 13.5d | 2021-10-19 A | 2021-11-07 A | 16 | 100% | 2021-10-19 | 2021-11-08 | 13.75d |  | 320.4h | 320.4h | 74,880 | 85,280 | 74,880 |
| 19 | 3.4.1.1 | 资源系统设计 |  | 34h | 2021-10-19 A | 2021-10-25 A | 16 | 100% | 2021-10-19 | 2021-10-25 | 34h | 程序0; 程序1; 程序2; 策划0 | 102h | 102h | 23,000 | 23,000 | 23,000 |
| 20 | 3.4.1.2 | 士兵系统设计 |  | 38h | 2021-10-25 A | 2021-11-04 A | 19 | 100% | 2021-10-25 | 2021-11-05 | 40h | 策划1; 程序1; 程序2 | 74h | 74h | 19,600 | 20,000 | 19,600 |
| 21 | 3.4.1.3 | 建筑系统设计 | milestone | 0h | 2021-10-19 A | 2021-10-19 A | 19 | 100% | 2021-10-25 | 2021-10-28 | 24h | 程序0; 策划0 |  |  | 400 | 10,000 | 400 |
| 22 | 3.4.1.4 | 科技系统设计 |  | 74h | 2021-10-25 A | 2021-11-07 A | 19 | 100% | 2021-10-25 | 2021-11-08 | 76h | 策划1; 程序1; 程序2 | 144.4h | 144.4h | 31,880 | 32,280 | 31,880 |
| 23 | 3.5 | 设计报告终稿 |  | 30h | 2021-11-08 A | 2021-11-11 A | 19, 20, 21, 22 | 100% | 2021-11-08 | 2021-11-10 | 16h | 策划0; 策划1; 程序0; 程序1; 程序2 | 62h | 62h | 17,400 | 14,600 | 17,400 |
| 24 | 3.6 | 设计报告评审 |  | 22h | 2021-11-10 A | 2021-11-12 A | 23 | 100% | 2021-11-10 | 2021-11-11 | 8h | 策划0; 策划1; 项目经理0 | 66h | 66h | 10,400 | 2,000 | 10,400 |

| ID | WBS | Task | Duration | Start | Finish | Predecessors | Complete | Remaining | Baseline start | Baseline finish | Baseline duration | Total slack | Resources | Work | Actual work | Cost | Baseline cost | Actual cost |
| --- | --- | --- | --- | --- | --- | --- | --- | --- | --- | --- | --- | --- | --- | --- | --- | --- | --- | --- |
| 25 | 4 | **系统实施** | 38.25d | 2021-11-11 A | 2022-01-04 | 13 | 34% | 25.32d | 2021-11-11 | 2022-01-04 | 38.25d | 0d |  | 1060h | 277.4h | 206,200 | 206,200 | 43,260 |
| 26 | 4.1 | 对局系统实施 | 258h | 2021-11-11 A | 2021-12-27 | 24 | 15% | 219.3h | 2021-11-11 | 2021-12-27 | 258h | 0d | 程序0; 程序1 | 516h | 77.4h | 110,400 | 110,400 | 18,260 |
| 27 | 4.2 | 联机系统实施 | 160h | 2021-11-11 A | 2021-12-09 | 24 | 5% | 152h | 2021-11-11 | 2021-12-09 | 160h | 11.5d | 程序2 | 160h | 8h | 33,000 | 33,000 | 2,600 |
| 28 | 4.3 | **美术资源开发** | 20d | 2021-11-11 A | 2021-12-09 | 24 | 80% | 4d | 2021-11-11 | 2021-12-09 | 20d | 12.25d |  | 240h | 192h | 26,000 | 26,000 | 22,400 |
| 29 | 4.3.1 | UI设计与开发 | 80h | 2021-11-11 A | 2021-11-25 | 24 | 90% | 8h | 2021-11-11 | 2021-11-25 | 80h | 22.25d | 美术0 | 80h | 72h | 17,000 | 17,000 | 15,400 |
| 30 | 4.3.2 | 游戏美术开发 | 160h | 2021-11-11 A | 2021-12-09 | 24 | 75% | 40h | 2021-11-11 | 2021-12-09 | 160h | 12.25d | 美术1 | 160h | 120h | 9,000 | 9,000 | 7,000 |
| 31 | 4.4 | 系统测试 | 40h | 2021-12-27 | 2022-01-03 | 27, 28, 29, 30, 26 |  |  | 2021-12-27 | 2022-01-03 | 40h | 0d | 测试0; 测试1; 测试2 | 120h |  | 19,000 | 19,000 |  |
| 32 | 4.5 | 系统发布 | 8h | 2022-01-03 | 2022-01-04 | 31 |  |  | 2022-01-03 | 2022-01-04 | 8h | 0d | 策划0; 策划1; 项目经理0 | 24h |  | 17,800 | 17,800 |  |
| 33 | 5 | **系统交付** | 10d | 2022-01-04 | 2022-01-18 | 32 |  |  | 2022-01-04 | 2022-01-18 | 10d | 0d |  | 272h |  | 44,800 | 44,800 |  |
| 34 | 5.1 | 用户功能测试 | 48h | 2022-01-04 | 2022-01-12 | 32 |  |  | 2022-01-04 | 2022-01-12 | 48h | 0d | 测试0; 测试1; 测试2; 程序1; 程序2 | 112h |  | 21,200 | 21,200 |  |
| 35 | 5.2 | 用户性能测试 | 32h | 2022-01-12 | 2022-01-18 | 32, 34 |  |  | 2022-01-12 | 2022-01-18 | 32h | 0d | 测试0; 测试1; 测试2; 程序1; 程序2 | 160h |  | 23,600 | 23,600 |  |
